WBS_ID,Task_Name,Category,Assigned_To,Start_Date,End_Date,Duration_Days,Dependencies,Status,Percent_Complete,Priority,Estimated_Cost
1.0,Planning & Procurement Phase,Planning & Procurement,Project Lead,2025-03-01,2025-05-09,70,,Completed,100,High,0
1.1,Kick-off Meeting & Stakeholder Alignment,Planning & Procurement,Project Lead,2025-03-01,2025-03-05,5,,Completed,100,High,0
1.2,Facility Site Assessment,Planning & Procurement,Facilities Team,2025-03-06,2025-03-19,14,1.1,Completed,100,High,8500
1.3,Compute Requirements Analysis,Planning & Procurement,Research Software Engineer,2025-03-06,2025-03-21,16,1.1,Completed,100,High,0
1.4,Vendor RFP Development & Issuance,Planning & Procurement,Project Lead,2025-03-22,2025-04-04,14,1.2;1.3,Completed,100,High,2000
1.5,Vendor Evaluation & Selection,Planning & Procurement,Project Lead,2025-04-05,2025-04-18,14,1.4,Completed,100,High,0
1.6,Contract Negotiation & PO Issuance,Planning & Procurement,Project Lead,2025-04-19,2025-05-02,14,1.5,Completed,100,High,3500
1.7,Budget Approval & Funding Verification,Planning & Procurement,Project Lead,2025-04-19,2025-05-09,21,1.5,Completed,100,High,0
2.0,Infrastructure Preparation Phase,Infrastructure Preparation,Facilities Team,2025-05-01,2025-07-11,72,,In Progress,62,High,0
2.1,Electrical Capacity Upgrade (200 kW),Infrastructure Preparation,Facilities Team,2025-05-01,2025-06-13,44,1.6,In Progress,80,High,125000
2.2,CRAC / In-Row Cooling Installation,Infrastructure Preparation,Facilities Team,2025-05-15,2025-06-27,44,1.6,In Progress,65,High,95000
2.3,Raised-Floor & Hot-Aisle Containment,Infrastructure Preparation,Facilities Team,2025-06-01,2025-06-27,27,2.1,In Progress,40,Medium,45000
2.4,Fire Suppression System Update,Infrastructure Preparation,Facilities Team,2025-06-14,2025-06-27,14,2.1,Not Started,0,High,18000
2.5,Network Cabling (Fiber & Copper),Infrastructure Preparation,Network Engineer,2025-06-14,2025-07-04,21,2.3,Not Started,0,High,32000
2.6,Building Management System Integration,Infrastructure Preparation,Facilities Team,2025-06-28,2025-07-11,14,2.2;2.4,Not Started,0,Medium,12000
2.7,Physical Security & Access Control,Infrastructure Preparation,Security Officer,2025-06-28,2025-07-11,14,2.3,Not Started,0,Medium,8000
3.0,Hardware Deployment Phase,Hardware Deployment,Vendor Team,2025-07-07,2025-08-22,47,,Not Started,0,High,0
3.1,Equipment Receiving & Inventory,Hardware Deployment,Systems Admin,2025-07-07,2025-07-11,5,1.6;2.5,Not Started,0,High,0
3.2,Rack Mounting & PDU Wiring,Hardware Deployment,Vendor Team,2025-07-12,2025-07-18,7,3.1,Not Started,0,High,0
3.3,DGX H100 Node Installation (×4),Hardware Deployment,Vendor Team,2025-07-19,2025-07-30,12,3.2,Not Started,0,High,0
3.4,Dell R760xa Node Installation (×8),Hardware Deployment,Vendor Team,2025-07-19,2025-08-01,14,3.2,Not Started,0,High,0
3.5,InfiniBand Fabric Deployment & Cabling,Hardware Deployment,Network Engineer,2025-07-26,2025-08-08,14,3.3;3.4,Not Started,0,High,0
3.6,Ethernet Network Configuration,Hardware Deployment,Network Engineer,2025-07-26,2025-08-08,14,3.2,Not Started,0,Medium,0
3.7,Storage System Installation & Zoning,Hardware Deployment,Systems Admin,2025-08-02,2025-08-15,14,3.5,Not Started,0,High,0
3.8,UPS Commissioning & Power-On Test,Hardware Deployment,Facilities Team,2025-08-09,2025-08-22,14,3.7,Not Started,0,High,0
4.0,Software & Configuration Phase,Software & Configuration,Systems Admin,2025-08-18,2025-09-26,40,,Not Started,0,High,0
4.1,Base OS & Firmware Deployment,Software & Configuration,Systems Admin,2025-08-18,2025-08-29,12,3.8,Not Started,0,High,0
4.2,Slurm Scheduler Installation & Tuning,Software & Configuration,Systems Admin,2025-08-25,2025-09-05,12,4.1,Not Started,0,High,0
4.3,"NVIDIA Driver, CUDA & cuDNN Stack",Software & Configuration,Research Software Engineer,2025-08-25,2025-09-05,12,4.1,Not Started,0,High,0
4.4,"ML Framework Installation (PyTorch, TF, JAX)",Software & Configuration,Research Software Engineer,2025-09-01,2025-09-12,12,4.3,Not Started,0,High,0
4.5,Parallel File System & Quota Setup,Software & Configuration,Systems Admin,2025-09-01,2025-09-12,12,3.7;4.1,Not Started,0,High,0
4.6,Security Hardening & Compliance Config,Software & Configuration,Security Officer,2025-09-08,2025-09-19,12,4.2,Not Started,0,High,0
4.7,Monitoring & Alerting (Prometheus/Grafana),Software & Configuration,Systems Admin,2025-09-15,2025-09-26,12,4.2;4.5,Not Started,0,Medium,0
5.0,Testing & Validation Phase,Testing & Validation,Systems Admin,2025-09-22,2025-10-24,33,,Not Started,0,High,0
5.1,Hardware Burn-In & Stress Testing,Testing & Validation,Vendor Team,2025-09-22,2025-10-03,12,4.3,Not Started,0,High,0
5.2,InfiniBand Fabric Validation (ib_write_bw),Testing & Validation,Network Engineer,2025-09-29,2025-10-06,8,5.1,Not Started,0,High,0
5.3,HPL / HPCG Benchmark Suite,Testing & Validation,Research Software Engineer,2025-10-01,2025-10-10,10,5.1,Not Started,0,High,0
5.4,"Multi-Node ML Training Test (ResNet-50, GPT-2)",Testing & Validation,Research Software Engineer,2025-10-06,2025-10-17,12,5.2;5.3,Not Started,0,High,0
5.5,Storage Performance Benchmark (IOR/MDTest),Testing & Validation,Systems Admin,2025-10-06,2025-10-13,8,5.1;4.5,Not Started,0,Medium,0
5.6,User Acceptance Testing (Pilot Research Groups),Testing & Validation,Research Software Engineer,2025-10-13,2025-10-24,12,5.4;5.5,Not Started,0,High,0
6.0,Operations & Training Phase,Operations & Training,Project Lead,2025-10-20,2025-11-07,19,,Not Started,0,Medium,0
6.1,System Administration Documentation,Operations & Training,Systems Admin,2025-10-20,2025-10-31,12,5.4,Not Started,0,Medium,0
6.2,Researcher Onboarding & Training Workshops,Operations & Training,Research Software Engineer,2025-10-27,2025-11-07,12,5.6,Not Started,0,High,5000
6.3,Operational Handoff to IT Operations,Operations & Training,Project Lead,2025-10-31,2025-11-07,8,6.1;6.2,Not Started,0,High,0
6.4,Post-Deployment Review & Lessons Learned,Operations & Training,Project Lead,2025-11-03,2025-11-07,5,6.3,Not Started,0,Low,0
